# Kinesic

How a schedule from MS Project changed from version to version. A marks actual dates.

## Version 1 (saved 2018-09-16)

Note of the change: Add files from old repo

| ID | WBS | Task | Duration | Start | Finish | Predecessors | Complete | Total float |
| --- | --- | --- | --- | --- | --- | --- | --- | --- |
| 1 | 1 | **Kinesic: Phase 1** | 202d | 2018-06-24 A | 2019-01-11 |  | 34% | 0d |
| 2 | 1.1 | **Milestones** | 168d | 2018-06-24 A | 2018-12-09 |  |  | 0d |
| 3 |  | Phase 1 Kick-off | 0d | 2018-06-24 A | 2018-06-24 A |  | 100% |  |
| 4 |  | Delivery 1 | 0d | 2018-09-02 A | 2018-09-02 A |  | 100% |  |
| 5 |  | Delivery 2 | 0d | 2018-10-07 | 2018-10-07 |  |  |  |
| 6 |  | Delivery 3 | 0d | 2018-11-11 | 2018-11-11 |  |  |  |
| 7 |  | Phase 1 Kick-out | 0d | 2018-12-09 | 2018-12-09 |  |  |  |
| 8 | 1.2 | **Project Planing** | 57d | 2018-06-24 A | 2018-08-19 |  | 90% | 0d |
| 9 | 1.2.1 | **Project Management** | 57d | 2018-06-24 A | 2018-08-19 |  | 99% | 0d |
| 10 |  | Define project management tool | 9d | 2018-07-28 A | 2018-08-05 A |  | 100% |  |
| 11 |  | Set project deadlines | 43d | 2018-06-24 A | 2018-08-05 A |  | 100% |  |
| 12 |  | Describe project tasks | 36d | 2018-06-24 A | 2018-07-29 A |  | 100% |  |
| 13 |  | Create project timeline in Excel | 7d | 2018-07-23 A | 2018-07-29 A | 10, 11, 12 | 100% |  |
| 14 |  | Integrate project tasks in PM tool | 14d | 2018-07-30 A | 2018-08-12 A | 13 | 100% |  |
| 15 |  | Create project timeline in PM tool | 21d | 2018-07-30 A | 2018-08-19 A | 14 | 100% |  |
| 16 | 1.2.2 | **Finance** | 43d | 2018-06-24 A | 2018-08-05 |  | 99% | 0d |
| 17 |  | Agree on available budget for phase 1 | 1d | 2018-06-24 A | 2018-06-24 A |  | 100% |  |
| 18 |  | Identify options to make money transfer | 16d | 2018-06-30 A | 2018-07-15 A |  | 100% |  |
| 19 |  | Decide on money transfer method | 1d | 2018-07-16 A | 2018-07-16 A | 18 | 100% |  |
| 20 |  | Transfer initial part of budget | 6d | 2018-07-17 A | 2018-07-22 A | 19 | 100% |  |
| 21 |  | Create accounting list | 22d | 2018-07-15 A | 2018-08-05 A |  | 100% |  |
| 22 | 1.2.3 | **State of the Art** | 50d | 2018-06-24 A | 2018-08-12 |  | 70% | 0d |
| 23 |  | Identify main competitors | 50d | 2018-06-24 A | 2018-08-12 |  | 50% |  |
| 24 |  | Create company profile of main competitors | 15d | 2018-07-29 A | 2018-08-12 |  | 50% |  |
| 25 |  | Research on MCUs or platforms for prototyping | 43d | 2018-06-24 A | 2018-08-05 A |  | 100% |  |
| 26 | 1.2.4 | **Electronic Components** | 36d | 2018-07-15 A | 2018-08-19 |  | 99% | 0d |
| 27 |  | Create list of components necessary to start | 22d | 2018-07-15 A | 2018-08-05 A |  | 100% |  |
| 28 |  | Clarify which components are available at Tec | 7d | 2018-08-06 A | 2018-08-12 A | 27 | 100% |  |
| 29 |  | Buy missing components | 7d | 2018-08-13 A | 2018-08-19 A | 28 | 100% |  |
| 30 |  | Define tool for electronic design | 14d | 2018-07-30 A | 2018-08-12 A |  | 100% |  |
| 31 | 1.3 | **Analog electronics** | 126d | 2018-08-06 A | 2018-12-09 |  | 40% | 0d |
| 32 | 1.3.1 | **ECG** | 56d | 2018-08-06 A | 2018-09-30 |  | 48% | 0d |
| 33 | 1.3.1.1 | **Preamplification** | 45d | 2018-08-06 A | 2018-09-19 |  | 82% | 0d |
| 34 |  | Identify gain ranges for pre-amplification | 14d | 2018-08-06 A | 2018-08-19 A |  | 100% |  |
| 35 |  | Define instrumental amplifier to be used | 7d | 2018-08-06 A | 2018-08-12 A | 34 | 100% |  |
| 36 |  | Calculate needed ranges of digital potentiometers | 14d | 2018-08-06 A | 2018-08-19 A | 35 | 100% |  |
| 37 |  | Identify and buy digital potentiomet. and InsAmp. | 14d | 2018-08-06 A | 2018-08-19 A | 36 | 100% |  |
| 38 |  | Build preamplification circuit in protoboard | 14d | 2018-08-06 A | 2018-08-19 A | 37 | 100% |  |
| 39 |  | Test preamplification circuit | 7d | 2018-09-13 | 2018-09-19 | 38 |  |  |
| 40 |  | Define final potentiomet. and InsAmp. to be used | 7d | 2018-09-13 | 2018-09-19 | 39 |  |  |
| 41 | 1.3.1.2 | **Multiplexer** | 30d | 2018-09-01 A | 2018-09-30 |  | 4% | 0d |
| 42 |  | Research types of analog multiplexers | 13d | 2018-09-01 A | 2018-09-13 |  | 20% |  |
| 43 |  | Identify and order 3 analog multiplexers | 13d | 2018-09-03 | 2018-09-15 | 42 |  |  |
| 44 |  | Receive multiplexer | 13d | 2018-09-05 | 2018-09-17 | 43 |  |  |
| 45 |  | Build multiplexer + preamplification in protoboard | 15d | 2018-09-08 | 2018-09-22 | 44 |  |  |
| 46 |  | Test signal quality with multiplexer | 6d | 2018-09-18 | 2018-09-23 | 45 |  |  |
| 47 |  | Verify maximum signal frequency with multiplexer | 6d | 2018-09-18 | 2018-09-23 | 46 |  |  |
| 48 |  | Define multiplexer to be used | 8d | 2018-09-23 | 2018-09-30 | 47 |  |  |
| 49 | 1.3.1.3 | **Filters** | 44d | 2018-08-13 A | 2018-09-25 |  | 67% | 0d |
| 50 |  | Identify frequency ranges for biosignals | 14d | 2018-08-13 A | 2018-08-26 A |  | 100% |  |
| 51 |  | Design cut-band filter at 60Hz | 14d | 2018-08-13 A | 2018-08-26 A | 50 | 100% |  |
| 52 |  | Identify and buy digital pot. for all frequency ranges | 14d | 2018-08-20 A | 2018-09-02 A | 51 | 100% |  |
| 53 |  | Build filter + multiplexer + preamp. in protoboard | 15d | 2018-09-08 | 2018-09-22 | 52 |  |  |
| 54 |  | Test filters | 4d | 2018-09-22 | 2018-09-25 | 53 |  |  |
| 55 |  | Define components for filter circuit | 2d | 2018-09-24 | 2018-09-25 | 54 |  |  |
| 56 | 1.3.1.4 | **Final Amplification** | 21d | 2018-09-10 A | 2018-09-30 |  | 36% | 0d |
| 57 |  | Identify gain ranges for final amplification | 7d | 2018-09-10 A | 2018-09-16 A |  | 100% |  |
| 58 |  | Calculate needed ranges of digital potentiometers | 7d | 2018-09-10 A | 2018-09-16 A | 57 | 100% |  |
| 59 |  | Identify and buy digital potentiometers | 10d | 2018-09-10 A | 2018-09-19 | 58 | 20% |  |
| 60 |  | Build amp+filter+multiplexer+preamp in protoboard | 7d | 2018-09-24 | 2018-09-30 | 59 |  |  |
| 61 |  | Test amplification circuit | 7d | 2018-09-24 | 2018-09-30 | 60 |  |  |
| 62 |  | Define digital potentiometers to be used | 7d | 2018-09-24 | 2018-09-30 | 61 |  |  |
| 63 | 1.3.2 | **General purpose channels** | 63d | 2018-08-06 A | 2018-10-07 |  | 53% | 0d |
| 64 | 1.3.2.1 | **Preamplification** | 42d | 2018-08-06 A | 2018-09-16 |  | 85% | 0d |
| 65 |  | Identify gain ranges for pre-amplification | 14d | 2018-08-06 A | 2018-08-19 A |  | 100% |  |
| 66 |  | Define instrumental amplifier to be used 12/08/2018: AD620 | 7d | 2018-08-06 A | 2018-08-12 A | 65 | 100% |  |
| 67 |  | Calculate needed ranges of digital potentiometers | 14d | 2018-08-06 A | 2018-08-19 A | 66 | 100% |  |
| 68 |  | Identify and buy digital potentiomet. and InsAmp. | 14d | 2018-08-06 A | 2018-08-19 A | 67 | 100% |  |
| 69 |  | Build preamplification circuit in protoboard | 14d | 2018-08-06 A | 2018-08-19 A | 68 | 100% |  |
| 70 |  | Test preamplification circuit | 8d | 2018-09-08 | 2018-09-15 | 69 |  |  |

| ID | WBS | Task | Duration | Start | Finish | Predecessors | Complete | Total float |
| --- | --- | --- | --- | --- | --- | --- | --- | --- |
| 71 |  | Define final potentiomet. and InsAmp. to be used | 3d | 2018-09-14 | 2018-09-16 | 70 |  |  |
| 72 | 1.3.2.2 | **Filters** | 56d | 2018-08-13 A | 2018-10-07 |  | 45% | 0d |
| 73 |  | Identify frequency ranges for biosignals | 14d | 2018-08-13 A | 2018-08-26 A |  | 100% |  |
| 74 |  | Calculate ranges of digital pot. for low-pass filters | 0d | 2018-09-12 A | 2018-09-12 | 73 | 20% |  |
| 75 |  | Calculate ranges of digital pot. for high-pass filters | 14d | 2018-08-13 A | 2018-08-26 A | 74 | 100% |  |
| 76 |  | Design cut-band filter at 60Hz | 14d | 2018-08-13 A | 2018-08-26 A | 45 | 100% |  |
| 77 |  | Identify and buy digital pot. for all frequency ranges | 19d | 2018-08-28 A | 2018-09-15 | 46 | 20% |  |
| 78 |  | Build filter + multiplexer + preamp. in protoboard | 20d | 2018-09-16 | 2018-10-05 | 47 |  |  |
| 79 |  | Test filters with different frequency ranges | 17d | 2018-09-20 | 2018-10-06 | 48 |  |  |
| 80 |  | Define components for filter circuit | 3d | 2018-10-05 | 2018-10-07 | 49 |  |  |
| 81 | 1.3.2.3 | **Final Amplification** | 27d | 2018-09-10 A | 2018-10-06 |  | 27% | 0d |
| 82 |  | Identify gain ranges for final amplification | 7d | 2018-09-10 A | 2018-09-16 A |  | 100% |  |
| 83 |  | Calculate needed ranges of digital potentiometers | 7d | 2018-09-10 A | 2018-09-16 A | 82 | 100% |  |
| 84 |  | Identify and buy digital potentiometers | 14d | 2018-09-10 A | 2018-09-23 | 83 | 20% |  |
| 85 |  | Build amp+filter+multiplexer+preamp in protoboard | 9d | 2018-09-24 | 2018-10-02 | 84 |  |  |
| 86 |  | Test amplification circuit | 12d | 2018-09-24 | 2018-10-05 | 85 |  |  |
| 87 |  | Define digital potentiometers to be used | 13d | 2018-09-24 | 2018-10-06 | 86 |  |  |
| 88 | 1.3.3 | **PCB Analog Electronic** | 81d | 2018-09-20 | 2018-12-09 | 30, 32, 63 |  | 0d |
| 89 |  | Design PCB Layout | 7d | 2018-10-08 | 2018-10-14 | 32, 63 |  |  |
| 90 |  | Create electronic/PCB layout | 9d | 2018-10-20 | 2018-10-28 | 89 |  |  |
| 91 |  | Contact 5 suppliers to manufacture prototype | 31d | 2018-09-20 | 2018-10-20 | 89, 90 |  |  |
| 92 |  | Receive 3 RFQs | 28d | 2018-10-01 | 2018-10-28 | 91 |  |  |
| 93 |  | Perform PO | 28d | 2018-10-22 | 2018-11-18 | 92 |  |  |
| 94 |  | Receive PCB prototype | 7d | 2018-11-19 | 2018-11-25 | 93 |  |  |
| 95 |  | Validate prototype | 14d | 2018-11-26 | 2018-12-09 | 94 |  |  |
| 96 | 1.4 | **Digital electronics** | 133d | 2018-07-30 A | 2018-12-09 |  | 11% | 0d |
| 97 | 1.4.1 | **Microcontroller Requirements** | 21d | 2018-07-30 A | 2018-08-19 | 88 | 67% | 0d |
| 98 |  | Define inputs needed for signal acquisition | 14d | 2018-08-06 A | 2018-08-19 A | 88FF | 100% |  |
| 99 |  | Define outputs needed for digital potentiometers | 14d | 2018-08-06 A | 2018-08-19 A | 88FF | 100% |  |
| 100 |  | Decide on communication protocol - MCU & Mobile | 14d | 2018-07-30 | 2018-08-12 |  |  |  |
| 101 | 1.4.2 | **Programming Signal Acquisition** | 37.25d | 2018-08-06 A | 2018-09-12 | 97 | 3% | 0d |
| 102 |  | Program signal acquisition in MCU | 6d | 2018-09-06 A | 2018-09-12 | 97FF | 20% |  |
| 103 |  | Design and implement signal validation tool | 13d | 2018-08-06 | 2018-08-19 |  |  |  |
| 104 |  | Test signal acquisition by using standard signals | 6d | 2018-08-13 | 2018-08-19 | 103FF |  |  |
| 105 |  | Program signal acquisition using multiplexer | 13d | 2018-08-13 | 2018-08-26 | 104FF |  |  |
| 106 |  | Test signal acquisition by using standard signals | 6.75d | 2018-08-27 | 2018-09-02 | 105FF |  |  |
| 107 | 1.4.3 | **Programming Analog Electronic Configuration** | 98d | 2018-09-03 A | 2018-12-09 | 32, 63, 88, 101 | 10% | 0d |
| 108 |  | Set base config. for acquisition of standard signals | 27d | 2018-09-03 A | 2018-09-30 | 101FF | 20% |  |
| 109 |  | Test base configuration by using standard signals | 6d | 2018-10-01 | 2018-10-07 | 108FF |  |  |
| 110 |  | Test base config. with electronic from protoboard | 6d | 2018-10-01 | 2018-10-07 | 32FF, 63FF |  |  |
| 111 |  | Test base config. with PCB analog electronic | 13.75d | 2018-11-26 | 2018-12-09 | 88FF |  |  |
| 112 | 1.4.4 | **Communication MCU - Mobile** | 63d | 2018-08-06 A | 2018-10-07 | 32, 63 | 4% | 0d |
| 113 |  | Identify and order communication module | 13d | 2018-08-06 A | 2018-08-19 |  | 20% |  |
| 114 |  | Program communication between MCU & Mobile | 20d | 2018-08-13 | 2018-09-02 | 113FF |  |  |
| 115 |  | Test communication by sending dummy sequences | 13d | 2018-09-03 | 2018-09-16 | 114FF |  |  |
| 116 |  | Test communication by sending known signal | 13d | 2018-09-03 | 2018-09-16 | 114FF |  |  |
| 117 |  | Test communication by sending biosignals | 6.75d | 2018-10-01 | 2018-10-07 | 32FF, 63FF |  |  |
| 118 | 1.4.5 | **PCB Final Hardware** | 98d | 2018-09-03 | 2018-12-09 | 112, 107, 101, 97 |  | 0d |
| 119 |  | Select MCU that covers requirements | 13d | 2018-09-03 | 2018-09-16 | 112FF, 107FF, 101FF, 97FF |  |  |
| 120 |  | Design PCB layout with analog electronics | 34d | 2018-09-10 | 2018-10-14 | 112FF, 107FF, 101FF, 97FF |  |  |
| 121 |  | Contact 5 suppliers to manufacture prototype | 27d | 2018-09-03 | 2018-09-30 | 120FF |  |  |
| 122 |  | Receive 3 RFQs | 27d | 2018-10-01 | 2018-10-28 | 121FF |  |  |
| 123 |  | Perform PO | 27d | 2018-10-22 | 2018-11-18 | 122 |  |  |
| 124 |  | Receive PCB prototype | 7d | 2018-11-19 | 2018-11-26 | 123 |  |  |
| 125 |  | Validate prototype | 12.75d | 2018-11-27 | 2018-12-09 | 124 |  |  |
| 126 | 1.5 | **Cloud Application** | 164d | 2018-08-01 A | 2019-01-11 |  | 24% | 0d |
| 127 | 1.5.1 | **Design Application Layout** | 33d | 2018-08-01 A | 2018-09-02 A |  | 100% |  |
| 128 |  | Create interface for display data | 32d | 2018-08-01 A | 2018-09-02 A |  | 100% |  |
| 129 |  | Main Menu Layout | 32d | 2018-08-01 A | 2018-09-02 A |  | 100% |  |
| 130 |  | Authentification Layout | 32d | 2018-08-01 A | 2018-09-02 A |  | 100% |  |
| 131 |  | Biosignal Display Layout | 32d | 2018-08-01 A | 2018-09-02 A |  | 100% |  |
| 132 |  | MCU Display Layout | 32d | 2018-08-01 A | 2018-09-02 A |  | 100% |  |
| 133 |  | Patient/User Info Display Layout | 32d | 2018-08-01 A | 2018-09-02 A |  | 100% |  |
| 134 |  | Storage/Cloud Access Display Layout | 32.75d | 2018-08-01 A | 2018-09-02 A |  | 100% |  |
| 135 | 1.5.2 | **Software Configuration** | 117d | 2018-08-01 A | 2018-11-25 |  | 15% | 0d |
| 136 |  | Choose programming language | 39d | 2018-08-01 A | 2018-09-09 A |  | 100% |  |
| 137 |  | Data Display Code | 76d | 2018-09-10 A | 2018-11-25 |  | 30% |  |
| 138 |  | Main Menu Code | 76d | 2018-09-10 A | 2018-11-25 |  | 30% |  |
| 139 |  | Authentification Code | 76d | 2018-09-10 | 2018-11-25 |  |  |  |
| 140 |  | Biosignal Display Code | 76d | 2018-09-10 | 2018-11-25 |  |  |  |

| ID | WBS | Task | Duration | Start | Finish | Predecessors | Total float |
| --- | --- | --- | --- | --- | --- | --- | --- |
| 141 |  | MCU Display Code | 76d | 2018-09-10 | 2018-11-25 |  |  |
| 142 |  | Patien/User Info Display Code | 76d | 2018-09-10 | 2018-11-25 |  |  |
| 143 |  | Storage/Cloud Access Display Code | 76.75d | 2018-09-10 | 2018-11-25 |  |  |
| 144 | 1.5.3 | **Hardware Configuration** | 63d | 2018-09-24 | 2018-11-25 | 112, 32, 63 | 0d |
| 145 |  | Test Bluetooth connection (Send) | 62d | 2018-09-24 | 2018-11-25 | 112FF |  |
| 146 |  | Test Bluetooth connection (Receive) | 62d | 2018-09-24 | 2018-11-25 | 112FF |  |
| 147 |  | Test config with protoboard and known signals | 49d | 2018-10-07 | 2018-11-25 | 112FF |  |
| 148 |  | Test config with protoboard and biosignals | 49.75d | 2018-10-07 | 2018-11-25 | 32FF, 63FF |  |
| 149 | 1.5.4 | **Signal Processing** | 50d | 2018-10-07 | 2018-11-25 | 144, 135 | 0d |
| 150 |  | Amplifications | 49d | 2018-10-07 | 2018-11-25 | 144FF, 135FF |  |
| 151 |  | Filters | 49d | 2018-10-07 | 2018-11-25 | 144FF, 135FF |  |
| 152 |  | Signal Conditioning (Rect, Prom, Offset, etc) | 49.75d | 2018-10-07 | 2018-11-25 | 144FF, 135FF |  |
| 153 | 1.5.5 | **Outsource App and Web design** | 97d | 2018-10-07 | 2019-01-11 | 127, 135, 144, 149 | 0d |
| 154 |  | Optimize application design | 64d | 2018-10-07 | 2018-12-09 | 127FF |  |
| 155 |  | Contact 5 suppliers to design the application | 15d | 2018-11-01 | 2018-11-16 | 127SF, 135SF, 144SF, 149SF |  |
| 156 |  | Receive 3 RFQs | 18d | 2018-11-05 | 2018-11-23 | 155 |  |
| 157 |  | Perform PO | 4d | 2018-11-26 | 2018-11-30 | 156 |  |
| 158 |  | Receive application | 33d | 2018-12-03 | 2019-01-04 |  |  |
| 159 |  | Validate application | 5d | 2019-01-07 | 2019-01-11 |  |  |

## Version 2 (saved 2018-09-23)

Note of the change: Include administrative tasks

Last finish stays 2019-01-11.

Added:

| ID | Task | Duration | Start | Finish |
| --- | --- | --- | --- | --- |
| 160 | **Administrative** | 1d? | 2018-06-24 | 2018-06-24 |
| 161 | **Business Plan** | 1d? | 2018-06-24 | 2018-06-24 |
| 162 | **Company Profile** | 1d? | 2018-06-24 | 2018-06-24 |
| 163 | Create company's description | 1d? | 2018-06-24 | 2018-06-24 |
| 164 | Generate profile of company's members | 1d? | 2018-06-24 | 2018-06-24 |
| 165 | Describe products and services | 1d? | 2018-06-24 | 2018-06-24 |
| 166 | **Market Research** | 1d? | 2018-06-24 | 2018-06-24 |
| 167 | Evaluate market size and expected growth for electronic medical devices | 1d? | 2018-06-24 | 2018-06-24 |
| 168 | Evaluate market size and expected growth for eHealth | 1d? | 2018-06-24 | 2018-06-24 |
| 169 | Evaluate market size and expected growth for development microcontroller platforms | 1d? | 2018-06-24 | 2018-06-24 |
| 170 | Analyze main competitors | 1d? | 2018-06-24 | 2018-06-24 |
| 171 | **Strategy and Implementation** | 1d? | 2018-06-24 | 2018-06-24 |
| 172 | Define marketing plan to promote the business and enter the market | 1d? | 2018-06-24 | 2018-06-24 |
| 173 | Evaluate impact of Hackathon with prototype | 1d? | 2018-06-24 | 2018-06-24 |
| 174 | Make feasibility analysis for crowdfunding campaign | 1d? | 2018-06-24 | 2018-06-24 |
| 175 | Describe pricing, promotion, distribution and logistics | 1d? | 2018-06-24 | 2018-06-24 |
| 176 | **Financial Analysis** | 1d? | 2018-06-24 | 2018-06-24 |
| 177 | Create historical financial data: income statements, balance sheets and cash flow statements | 1d? | 2018-06-24 | 2018-06-24 |
| 178 | Estimate financial situation for the company's first 5 years | 1d | 2018-06-24 | 2018-06-24 |
| 179 | **Company** | 1d? | 2018-06-24 | 2018-06-24 |
| 180 | **Foundation** | 0.75d | 2018-06-24 | 2018-06-24 |
| 181 | Investigate requirements for UG and GmbH foundation | 1d | 2018-06-24 | 2018-06-24 |
| 182 | Investigate requirements for S.A. de C.V. foundation | 1d | 2018-06-24 | 2018-06-24 |
| 183 | Investigate collaboration or synergy between S.A. de C.V. and UG/GmbH | 1d | 2018-06-24 | 2018-06-24 |
| 184 | Found UG or GmbH | 1d | 2018-06-24 | 2018-06-24 |
| 185 | Found S.A. de C.V. (if needed) | 1d | 2018-06-24 | 2018-06-24 |
| 186 | **Tax Consulting** | 0.75d | 2018-06-24 | 2018-06-24 |
| 187 | Receive 3 RFQs from tax consultants in Germany | 1d | 2018-06-24 | 2018-06-24 |
| 188 | Hire tax consultant in Germany | 1d | 2018-06-24 | 2018-06-24 |
| 189 | Receive 3 RFQs from tax consultants in Mexico (if needed) | 1d | 2018-06-24 | 2018-06-24 |
| 190 | Hire tax consultant in Mexico (if needed) | 1d | 2018-06-24 | 2018-06-24 |
| 191 | **Accounting Tool** | 0.75d | 2018-06-24 | 2018-06-24 |
| 192 | Investigate accounting tools | 1d | 2018-06-24 | 2018-06-24 |
| 193 | Define accounting tool to be used | 1d | 2018-06-24 | 2018-06-24 |
| 194 | **HR Tool** | 0.75d | 2018-06-24 | 2018-06-24 |
| 195 | Define tool to be used for company's email (e.g., tool to connect external email to email account) | 1d | 2018-06-24 | 2018-06-24 |
| 196 | **Website** | 0.75d | 2018-06-24 | 2018-06-24 |
| 197 | Receive 3 RFQs to outsource website | 1d | 2018-06-24 | 2018-06-24 |
| 198 | Outsource website design (Front End) | 1d | 2018-06-24 | 2018-06-24 |
| 199 | Generate initial emails with company's website | 1d | 2018-06-24 | 2018-06-24 |
| 200 | Integrate Web Solution to company's website (Front End) | 1d | 2018-06-24 | 2018-06-24 |
| 201 | **Funding** | 1d? | 2018-06-24 | 2018-06-24 |
| 202 | Horizon 2020 | 1d? | 2018-06-24 | 2018-06-24 |
| 203 | Funding Programs: EU | 1d? | 2018-06-24 | 2018-06-24 |
| 204 | Funding Programs: Germany | 1d | 2018-06-24 | 2018-06-24 |
| 205 | Funding Programs: Mexico | 1d | 2018-06-24 | 2018-06-24 |
| 206 | Funding Programs: Jalisco | 1d? | 2018-06-24 | 2018-06-24 |
| 207 | Crowdfunding | 1d? | 2018-06-24 | 2018-06-24 |
| 208 | **IP** | 1d? | 2018-06-24 | 2018-06-24 |
| 209 | General Information | 1d? | 2018-06-24 | 2018-06-24 |
| 210 | International Patent | 1d? | 2018-06-24 | 2018-06-24 |
| 211 | European Patent | 1d? | 2018-06-24 | 2018-06-24 |
| 212 | US Patent | 1d? | 2018-06-24 | 2018-06-24 |

## Version 3 (saved 2018-09-23)

Note of the change: Update after meeting 23.09.

Last finish stays 2019-01-11. Complete tasks 48 → 57.

Changed:

| ID | Task | Start | Finish | Complete | Other |
| --- | --- | --- | --- | --- | --- |
| 1 | **Kinesic: Phase 1** |  |  | 34% → 41% |  |
| 8 | **Project planing** |  |  |  | was named Project Planing |
| 31 | **Analog electronics** |  |  | 40% → 57% |  |
| 32 | **ECG** |  |  | 48% → 65% |  |
| 41 | **Multiplexer** |  |  | 4% → 53% |  |
| 42 | Research types of analog multiplexers |  | 2018-09-13 A | 20% → 100% |  |
| 43 | Identify and order 3 analog multiplexers | 2018-09-03 A | 2018-09-15 A | 0% → 100% |  |
| 44 | Receive multiplexer | 2018-09-05 A | 2018-09-17 A | 0% → 100% |  |
| 56 | **Final Amplification** |  |  | 36% → 53% |  |
| 59 | Identify and buy digital potentiometers |  | 2018-09-19 A | 20% → 100% |  |
| 63 | **General purpose channels** |  |  | 53% → 78% |  |
| 64 | **Preamplification** |  |  | 85% → 96% |  |
| 70 | Test preamplification circuit | 2018-09-08 A | 2018-09-15 A | 0% → 100% |  |
| 72 | **Filters** |  |  | 45% → 97% |  |
| 74 | Calculate ranges of digital pot. for low-pass filters |  | 2018-09-12 A | 20% → 100% |  |
| 77 | Identify and buy digital pot. for all frequency ranges |  | 2018-09-15 A | 20% → 100% |  |
| 78 | Build filter + multiplexer + preamp. in protoboard | 2018-09-16 A | 2018-10-05 A | 0% → 100% |  |
| 79 | Test filters with different frequency ranges | 2018-09-20 A | 2018-10-06 A | 0% → 100% |  |
| 126 | **Cloud application** |  |  | 24% → 30% | was named Cloud Application |
| 135 | **Software Configuration** |  |  | 15% → 28% |  |
| 139 | Authentification Code | 2018-09-10 A |  | 0% → 75% |  |
| 142 | Patient/User Info Display Code |  |  |  | was named Patien/User Info Display Code |
| 143 | Storage/Cloud Access Display Code | 2018-09-10 A |  | 0% → 25% |  |

## Version 4 (saved 2018-10-07)

Note of the change: Update after meeting 07.10.

Last finish 2019-01-11 → 2019-01-30 (+19d). Complete tasks 57 → 86.

Added:

| ID | Task | Duration | Start | Finish | Predecessors | Resources |
| --- | --- | --- | --- | --- | --- | --- |
| 63 | Test DI, DII, DIII simultaneously | 8d | 2018-10-07 | 2018-10-14 |  |  |
| 180 | **Business Plan: Heart monitor** | 63.5d | 2018-10-07 | 2018-12-09 |  | Eduardo |
| 181 | **Company Profile** | 6d | 2018-12-04 | 2018-12-09 |  | Eduardo |
| 182 | Create company's description | 2d | 2018-12-04 | 2018-12-06 | 194 | Eduardo |
| 183 | Generate profile of company's members | 2d | 2018-12-06 | 2018-12-08 | 182 | Eduardo |
| 184 | Describe products and services | 1.25d | 2018-12-08 | 2018-12-09 | 183 | Eduardo |
| 185 | **Market Research** | 14d | 2018-10-07 | 2018-10-21 |  | Eduardo |
| 186 | Evaluate market size and expected growth for electronic medical devices | 2.5d | 2018-10-07 | 2018-10-09 |  | Eduardo |
| 187 | Evaluate market size and expected growth for eHealth | 3d | 2018-10-10 | 2018-10-12 | 186 | Eduardo |
| 188 | Evaluate market size and expected growth for hearth diseases | 3d | 2018-10-13 | 2018-10-16 | 187 | Eduardo |
| 189 | Analyze main competitors | 5d | 2018-10-16 | 2018-10-21 | 188 | Eduardo |
| 190 | **Strategy and Implementation** | 32d | 2018-10-22 | 2018-11-22 |  | Eduardo |
| 191 | Describe pricing, promotion, distribution and logistics | 9d | 2018-10-22 | 2018-10-31 | 185 | Eduardo |
| 192 | Define marketing plan to promote the business and enter the market | 10d | 2018-10-31 | 2018-11-10 | 191 | Eduardo |
| 193 | Make feasibility analysis for crowdfunding campaign | 15.75d | 2018-11-07 | 2018-11-22 | 192SS | Eduardo |
| 194 | **Financial Analysis** | 11d | 2018-11-23 | 2018-12-03 |  | Eduardo |
| 195 | Create historical financial data: income statements, balance sheets and cash flow statements | 5d | 2018-11-23 | 2018-11-28 | 190 | Eduardo |
| 196 | Estimate financial situation for the company's first 5 years | 5.5d | 2018-11-28 | 2018-12-03 | 195 | Eduardo |
| 214 | **Website: Biosignal platform** | 66.5d | 2018-09-17 | 2018-11-22 |  | Jorge; Eduardo |
| 215 | Receive 3 RFQs to outsource website | 25d | 2018-09-17 | 2018-10-11 |  | Jorge |
| 216 | Outsource website design (Front End) | 22d | 2018-10-26 | 2018-11-17 | 215, 220 | Jorge |
| 217 | Generate initial emails with company's website | 5d | 2018-11-17 | 2018-11-22 | 216, 221 | Jorge |
| 222 | Buy keywords | 5d | 2018-10-26 | 2018-10-31 | 220 | Eduardo |
| 223 | Idea validation | 30d | 2018-10-26 | 2018-11-25 | 220 | Eduardo |
| 224 | Results analysis | 6.25d | 2018-11-25 | 2018-12-01 | 223 | Eduardo |

Removed: 200 Integrate Web Solution to company's website (Front End)

Changed:

| ID | Task | Start | Finish | Duration | Complete | Total float | Other |
| --- | --- | --- | --- | --- | --- | --- | --- |
| 1 | **Kinesic: Phase 1** |  |  |  | 41% → 60% |  |  |
| 5 | Delivery 2 | 2018-10-07 → 2018-10-08 (+1d) | 2018-10-07 → 2018-10-08 (+1d) |  |  |  |  |
| 8 | **Project planing** |  | 2018-08-19 A |  | 90% → 100% | 0d → none | resources Eduardo; Jorge → Eduardo |
| 9 | **Project Management** |  | 2018-08-19 A |  | 99% → 100% | 0d → none | resources Eduardo; Jorge → Eduardo |
| 16 | **Finance** |  | 2018-08-05 A |  | 99% → 100% | 0d → none | resources Jorge → All |
| 22 | **State of the Art** |  | 2018-08-12 A |  | 70% → 100% | 0d → none |  |
| 23 | Identify main competitors |  | 2018-08-12 A |  | 50% → 100% |  |  |
| 24 | Create company profile of main competitors |  | 2018-08-12 A |  | 50% → 100% |  |  |
| 26 | **Electronic Components** |  | 2018-08-19 A |  | 99% → 100% | 0d → none |  |
| 31 | **Analog electronics** |  |  |  | 57% → 76% |  |  |
| 32 | **ECG** |  | 2018-09-30 → 2018-10-14 (+14d) | 56d → 70d | 65% → 97% |  |  |
| 33 | **Preamplification** |  | 2018-09-19 A |  | 82% → 100% | 0d → none |  |
| 39 | Test preamplification circuit | 2018-09-13 A | 2018-09-19 A |  | 0% → 100% |  |  |
| 40 | Define final potentiomet. and InsAmp. to be used | 2018-09-13 A | 2018-09-19 A |  | 0% → 100% |  |  |
| 41 | **Multiplexer** |  | 2018-09-30 A |  | 53% → 100% | 0d → none |  |
| 45 | Build multiplexer + preamplification in protoboard | 2018-09-08 A | 2018-09-22 A |  | 0% → 100% |  |  |
| 46 | Test signal quality with multiplexer | 2018-09-18 A | 2018-09-23 A |  | 0% → 100% |  |  |
| 47 | Verify maximum signal frequency with multiplexer | 2018-09-18 A | 2018-09-23 A |  | 0% → 100% |  |  |
| 48 | Define multiplexer to be used | 2018-09-23 A | 2018-09-30 A |  | 0% → 100% |  |  |
| 49 | **Filters** |  | 2018-09-25 A |  | 67% → 100% | 0d → none |  |
| 53 | Build filter + multiplexer + preamp. in protoboard | 2018-09-08 A | 2018-09-22 A |  | 0% → 100% |  |  |
| 54 | Test filters | 2018-09-22 A | 2018-09-25 A |  | 0% → 100% |  |  |
| 55 | Define components for filter circuit | 2018-09-24 A | 2018-09-25 A |  | 0% → 100% |  |  |
| 56 | **Final Amplification** |  | 2018-09-30 A |  | 53% → 100% | 0d → none |  |
| 60 | Build amp+filter+multiplexer+preamp in protoboard | 2018-09-24 A | 2018-09-30 A |  | 0% → 100% |  |  |
| 61 | Test amplification circuit | 2018-09-24 A | 2018-09-30 A |  | 0% → 100% |  |  |
| 62 | Define digital potentiometers to be used | 2018-09-24 A | 2018-09-30 A |  | 0% → 100% |  |  |
| 64 | **General purpose channels** |  | 2018-10-07 → 2018-10-14 (+7d) | 63d → 70d | 78% → 91% |  |  |
| 65 | **Preamplification** |  | 2018-09-16 A |  | 96% → 100% | 0d → none |  |
| 72 | Define final potentiomet. and InsAmp. to be used | 2018-09-14 A | 2018-09-16 A |  | 0% → 100% |  |  |
| 73 | **Filters** |  | 2018-10-07 A |  | 97% → 100% | 0d → none |  |
| 81 | Define components for filter circuit | 2018-10-05 A | 2018-10-07 A |  | 0% → 100% |  |  |
| 82 | **Final Amplification** |  | 2018-10-06 → 2018-10-14 (+8d) | 27d → 35d | 27% → 70% |  |  |
| 85 | Identify and buy digital potentiometers |  | 2018-09-23 A |  | 20% → 100% |  |  |
| 86 | Build amp+filter+multiplexer+preamp in protoboard | 2018-09-24 A | 2018-10-02 A |  | 0% → 100% |  |  |
| 87 | Test amplification circuit |  | 2018-10-05 → 2018-10-14 (+9d) | 12d → 21d |  |  |  |
| 88 | Define digital potentiometers to be used | 2018-09-24 A | 2018-10-06 A |  | 0% → 100% |  |  |
| 97 | **Digital electronics** |  |  |  | 11% → 41% |  |  |
| 98 | **Microcontroller Requirements** |  | 2018-08-19 A |  | 67% → 100% | 0d → none |  |
| 101 | Decide on communication protocol - MCU & Mobile | 2018-07-30 A | 2018-08-12 A |  | 0% → 100% |  |  |
| 102 | **Programming Signal Acquisition** |  | 2018-09-12 A |  | 3% → 100% | 0d → none |  |
| 103 | Program signal acquisition in MCU |  | 2018-09-12 A |  | 20% → 100% |  |  |
| 104 | Design and implement signal validation tool | 2018-08-06 A | 2018-08-19 A |  | 0% → 100% |  |  |
| 105 | Test signal acquisition by using standard signals | 2018-08-13 A | 2018-08-19 A |  | 0% → 100% |  |  |
| 106 | Program signal acquisition using multiplexer | 2018-08-13 A | 2018-08-26 A |  | 0% → 100% |  |  |
| 107 | Test signal acquisition by using standard signals | 2018-08-27 A | 2018-09-02 A |  | 0% → 100% |  |  |
| 108 | **Programming Analog Electronic Configuration** |  |  |  | 10% → 50% |  |  |
| 109 | Set base config. for acquisition of standard signals |  |  |  | 20% → 50% |  |  |
| 110 | Test base configuration by using standard signals | 2018-10-01 A |  |  | 0% → 50% |  |  |
| 111 | Test base config. with electronic from protoboard | 2018-10-01 A |  |  | 0% → 50% |  |  |
| 112 | Test base config. with PCB analog electronic | 2018-11-26 A |  |  | 0% → 50% |  |  |
| 113 | **Communication MCU - Mobile** |  |  |  | 4% → 50% |  |  |
| 114 | Identify and order communication module |  |  |  | 20% → 50% |  |  |
| 115 | Program communication between MCU & Mobile | 2018-08-13 A |  |  | 0% → 50% |  |  |
| 116 | Test communication by sending dummy sequences | 2018-09-03 A |  |  | 0% → 50% |  |  |
| 117 | Test communication by sending known signal | 2018-09-03 A |  |  | 0% → 50% |  |  |
| 118 | Test communication by sending biosignals | 2018-10-01 A |  |  | 0% → 50% |  |  |
| 127 | **Cloud application** |  |  |  | 30% → 47% |  |  |
| 136 | **Software Configuration** |  |  |  | 28% → 63% |  |  |
| 138 | Data Display Code |  | 2018-11-25 A |  | 30% → 100% |  |  |
| 139 | Main Menu Code |  | 2018-11-25 A |  | 30% → 100% |  |  |
| 140 | Authentification Code |  | 2018-11-25 A |  | 75% → 100% |  |  |
| 143 | Patient/User Info Display Code | 2018-09-10 A | 2018-11-25 A |  | 0% → 100% |  |  |
| 145 | **Hardware Configuration** | 2018-09-24 A |  |  | 0% → 14% |  |  |
| 147 | Test Bluetooth connection (Receive) | 2018-09-24 A |  |  | 0% → 50% |  |  |
| 162 | **Business Plan: Biosignals Platform** |  |  |  |  |  | was named Business Plan |
| 197 | **Company** | 2018-06-24 → 2018-09-17 (+85d) | 2018-06-24 → 2019-01-30 (+220d) | 1d? → 136d |  | none → 0d | resources none → Jorge; Eduardo |
| 198 | **Foundation** | 2018-06-24 → 2018-10-01 (+99d) | 2018-06-24 → 2019-01-30 (+220d) | 0.75d → 122d |  |  | resources none → Eduardo; Jorge |
| 199 | Investigate requirements for UG and GmbH foundation | 2018-06-24 → 2018-10-01 (+99d) | 2018-06-24 → 2018-10-30 (+128d) | 1d → 30d |  |  | resources none → Eduardo |
| 200 | Investigate requirements for S.A. de C.V. foundation | 2018-06-24 → 2018-12-10 (+169d) | 2018-06-24 → 2018-12-23 (+182d) | 1d → 14d |  |  | resources none → Eduardo; Jorge |

| ID | Task | Start | Finish | Duration | Total float | Predecessors | Other |
| --- | --- | --- | --- | --- | --- | --- | --- |
| 201 | Investigate collaboration or synergy between S.A. de C.V. and UG/GmbH | 2018-06-24 → 2018-12-24 (+183d) | 2018-06-24 → 2019-01-06 (+196d) | 1d → 14d |  | none → 199, 200 | resources none → Eduardo; Jorge |
| 202 | Found UG or GmbH | 2018-06-24 → 2018-10-31 (+129d) | 2018-06-24 → 2018-11-29 (+158d) | 1d → 30d |  | none → 199 | resources none → Eduardo |
| 203 | Found S.A. de C.V. (if needed) | 2018-06-24 → 2019-01-07 (+197d) | 2018-06-24 → 2019-01-30 (+220d) | 1d → 24d |  | none → 201 | resources none → Jorge |
| 204 | **Tax Consulting** | 2018-06-24 → 2018-10-25 (+123d) | 2018-06-24 → 2019-01-25 (+215d) | 0.75d → 93d |  |  | resources none → Eduardo; Jorge |
| 205 | Receive 3 RFQs from tax consultants in Germany | 2018-06-24 → 2018-10-25 (+123d) | 2018-06-24 → 2018-11-15 (+144d) | 1d → 22d |  |  | resources none → Eduardo |
| 206 | Hire tax consultant in Germany | 2018-06-24 → 2018-11-19 (+148d) | 2018-06-24 → 2018-11-23 (+152d) | 1d → 5d |  | none → 205 | resources none → Eduardo |
| 207 | Receive 3 RFQs from tax consultants in Mexico (if needed) | 2018-06-24 → 2019-01-07 (+197d) | 2018-06-24 → 2019-01-21 (+211d) | 1d → 15d |  | none → 203SS | resources none → Jorge |
| 208 | Hire tax consultant in Mexico (if needed) | 2018-06-24 → 2019-01-22 (+212d) | 2018-06-24 → 2019-01-25 (+215d) | 1d → 3.75d |  | none → 207 | resources none → Jorge |
| 209 | **Accounting Tool** | 2018-06-24 → 2018-11-05 (+134d) | 2018-06-24 → 2018-11-23 (+152d) | 0.75d → 19d |  |  | resources none → Eduardo |
| 210 | Investigate accounting tools | 2018-06-24 → 2018-11-05 (+134d) | 2018-06-24 → 2018-11-18 (+147d) | 1d → 14d |  |  | resources none → Eduardo |
| 211 | Define accounting tool to be used | 2018-06-24 → 2018-11-19 (+148d) | 2018-06-24 → 2018-11-23 (+152d) | 1d → 4.75d |  | none → 210 | resources none → Eduardo |
| 212 | **HR Tool** | 2018-06-24 → 2018-11-26 (+155d) | 2018-06-24 → 2018-11-30 (+159d) | 0.75d → 5d |  |  | resources none → Eduardo |
| 213 | Define tool to be used for company's email (e.g., tool to connect external email to email account) | 2018-06-24 → 2018-11-26 (+155d) | 2018-06-24 → 2018-11-30 (+159d) | 1d → 5d |  |  | resources none → Eduardo |
| 218 | **Website: Heart monitor** | 2018-06-24 → 2018-09-17 (+85d) | 2018-06-24 → 2018-12-01 (+160d) | 0.75d → 76d |  |  | was named Website; resources none → Jorge; Eduardo |
| 219 | Receive 3 RFQs to outsource website | 2018-06-24 → 2018-09-17 (+85d) | 2018-06-24 → 2018-10-11 (+109d) | 1d → 24d |  |  | resources none → Jorge |
| 220 | Outsource website design (Front End) | 2018-06-24 → 2018-10-11 (+109d) | 2018-06-24 → 2018-10-26 (+124d) | 1d → 15d |  | none → 219 | resources none → Jorge |
| 221 | Generate initial emails with company's website | 2018-06-24 → 2018-10-26 (+124d) | 2018-06-24 → 2018-10-31 (+129d) | 1d → 5d |  | none → 220 | resources none → Jorge |
| 225 | **Funding** | 2018-06-24 → 2018-10-31 (+129d) | 2018-06-24 → 2019-01-12 (+202d) | 1d? → 74d | none → 0d | none → 199, 200 | resources none → Jorge; Eduardo |
| 226 | Horizon 2020 | 2018-06-24 → 2018-10-31 (+129d) | 2018-06-24 → 2018-11-09 (+138d) | 1d? → 10d |  | none → 199 | resources none → Eduardo |
| 227 | Funding Programs: EU | 2018-06-24 → 2018-11-10 (+139d) | 2018-06-24 → 2018-11-19 (+148d) | 1d? → 10d |  | none → 226 | resources none → Eduardo |
| 228 | Funding Programs: Germany | 2018-06-24 → 2018-11-20 (+149d) | 2018-06-24 → 2018-11-29 (+158d) | 1d → 10d |  | none → 227 | resources none → Eduardo |
| 229 | Funding Programs: Mexico | 2018-06-24 → 2018-12-24 (+183d) | 2018-06-24 → 2019-01-02 (+192d) | 1d → 10d |  | none → 200 | resources none → Jorge |
| 230 | Funding Programs: Jalisco | 2018-06-24 → 2019-01-03 (+193d) | 2018-06-24 → 2019-01-12 (+202d) | 1d? → 10d |  | none → 229 | resources none → Jorge |
| 231 | Crowdfunding | 2018-06-24 → 2018-10-31 (+129d) | 2018-06-24 → 2018-11-09 (+138d) | 1d? → 10d |  | none → 199 | resources none → Eduardo |
| 232 | **IP** | 2018-06-24 → 2018-11-01 (+130d) | 2018-06-24 → 2018-12-31 (+190d) | 1d? → 61d | none → 0d |  | resources none → Eduardo; Jorge |
| 233 | General Information | 2018-06-24 → 2018-11-01 (+130d) | 2018-06-24 → 2018-11-16 (+145d) | 1d? → 15d |  |  | resources none → Eduardo |
| 234 | European Patent | 2018-06-24 → 2018-11-16 (+145d) | 2018-06-24 → 2018-12-01 (+160d) | 1d? → 15d |  | none → 233 | resources none → Eduardo |
| 235 | US Patent | 2018-06-24 → 2018-12-01 (+160d) | 2018-06-24 → 2018-12-16 (+175d) | 1d? → 15d |  | none → 234 | resources none → Jorge |
| 236 | International Patent | 2018-06-24 → 2018-12-16 (+175d) | 2018-06-24 → 2018-12-31 (+190d) | 1d? → 15d |  | none → 235 | resources none → Eduardo |

## Version 5 (saved 2018-10-10)

Note of the change: Update administrative tasks

Last finish stays 2019-01-30.

Changed:

| ID | Task | Start | Finish | Duration | Total float | Predecessors | Other |
| --- | --- | --- | --- | --- | --- | --- | --- |
| 161 | **Administrative** | 2018-06-24 → 2018-09-17 (+85d) | 2018-06-24 → 2019-01-30 (+220d) | 1d? → 136d | none → 0d |  | resources none → Eduardo; Jorge |
| 162 | **Business Plan: Biosignals Platform** | 2018-06-24 → 2018-10-07 (+105d) | 2018-06-24 → 2018-12-09 (+168d) | 1d? → 64d | none → 0d |  | resources none → Eduardo |
| 163 | **Company Profile** | 2018-06-24 → 2018-12-04 (+163d) | 2018-06-24 → 2018-12-09 (+168d) | 1d? → 6d | none → 0d |  | resources none → Eduardo |
| 164 | Create company's description | 2018-06-24 → 2018-12-04 (+163d) | 2018-06-24 → 2018-12-06 (+165d) | 1d? → 3d |  |  | resources none → Eduardo |
| 165 | Generate profile of company's members | 2018-06-24 → 2018-12-06 (+165d) | 2018-06-24 → 2018-12-08 (+167d) | 1d? → 3d |  |  | resources none → Eduardo |
| 166 | Describe products and services | 2018-06-24 → 2018-12-08 (+167d) | 2018-06-24 → 2018-12-09 (+168d) | 1d? → 2d |  |  | resources none → Eduardo |
| 167 | **Market Research** | 2018-06-24 → 2018-10-07 (+105d) | 2018-06-24 → 2018-10-21 (+119d) | 1d? → 15d | none → 0d |  | resources none → Eduardo |
| 168 | Evaluate market size and expected growth for electronic medical devices | 2018-06-24 → 2018-10-07 (+105d) | 2018-06-24 → 2018-10-09 (+107d) | 1d? → 3d |  |  | resources none → Eduardo |
| 169 | Evaluate market size and expected growth for eHealth | 2018-06-24 → 2018-10-10 (+108d) | 2018-06-24 → 2018-10-12 (+110d) | 1d? → 3d |  |  | resources none → Eduardo |
| 170 | Evaluate market size and expected growth for development microcontroller platforms | 2018-06-24 → 2018-10-13 (+111d) | 2018-06-24 → 2018-10-16 (+114d) | 1d? → 4d |  |  | resources none → Eduardo |
| 171 | Analyze main competitors | 2018-06-24 → 2018-10-16 (+114d) | 2018-06-24 → 2018-10-21 (+119d) | 1d? → 6d |  |  | resources none → Eduardo |
| 172 | **Strategy and Implementation** | 2018-06-24 → 2018-10-22 (+120d) | 2018-06-24 → 2018-12-07 (+166d) | 1d? → 47d | none → 0d |  | resources none → Eduardo |
| 173 | Describe pricing, promotion, distribution and logistics | 2018-06-24 → 2018-10-22 (+120d) | 2018-06-24 → 2018-10-31 (+129d) | 1d? → 10d |  |  | resources none → Eduardo |
| 174 | Define marketing plan to promote the business and enter the market | 2018-06-24 → 2018-10-31 (+129d) | 2018-06-24 → 2018-11-10 (+139d) | 1d? → 11d |  |  | resources none → Eduardo |
| 175 | Make feasibility analysis for crowdfunding campaign | 2018-06-24 → 2018-11-07 (+136d) | 2018-06-24 → 2018-11-22 (+151d) | 1d? → 16d |  |  | resources none → Eduardo |
| 176 | Evaluate impact of Hackathon with prototype | 2018-06-24 → 2018-11-23 (+152d) | 2018-06-24 → 2018-12-07 (+166d) | 1d? → 15d |  |  | resources none → Eduardo |
| 177 | **Financial Analysis** | 2018-06-24 → 2018-11-23 (+152d) | 2018-06-24 → 2018-12-03 (+162d) | 1d? → 11d | none → 0d |  | resources none → Eduardo |
| 178 | Create historical financial data: income statements, balance sheets and cash flow statements | 2018-06-24 → 2018-11-23 (+152d) | 2018-06-24 → 2018-11-28 (+157d) | 1d? → 6d |  |  | resources none → Eduardo |
| 179 | Estimate financial situation for the company's first 5 years | 2018-06-24 → 2018-11-28 (+157d) | 2018-06-24 → 2018-12-03 (+162d) | 1d → 6d |  |  | resources none → Eduardo |
| 215 | Receive 3 RFQs to outsource website |  | 2018-10-11 → 2018-10-14 (+3d) | 25d → 28d |  |  |  |
| 219 | Receive 3 RFQs to outsource website |  | 2018-10-11 → 2018-10-14 (+3d) | 24d → 27d |  |  |  |
| 220 | Outsource website design (Front End) |  |  |  |  | 219 → none |  |

## Version 6 (saved 2018-10-14)

Note of the change: Market reports

Last finish stays 2019-01-30. Complete tasks 86 → 85.

Changed:

| ID | Task | Start | Finish | Duration | Complete |
| --- | --- | --- | --- | --- | --- |
| 1 | **Kinesic: Phase 1** |  |  |  | 60% → 61% |
| 31 | **Analog electronics** |  |  |  | 76% → 75% |
| 32 | **ECG** |  | 2018-10-14 → 2018-10-19 (+5d) | 70d → 75d | 97% → 95% |
| 63 | Test DI, DII, DIII simultaneously |  | 2018-10-14 → 2018-10-19 (+5d) | 8d → 13d |  |
| 127 | **Cloud application** |  |  |  | 47% → 49% |
| 136 | **Software Configuration** |  |  |  | 63% → 67% |
| 140 | Authentification Code |  | 2018-11-25 A → 2018-11-25 |  | 100% → 75% |
| 141 | Biosignal Display Code | 2018-09-10 A |  |  | 0% → 75% |
| 143 | Patient/User Info Display Code | 2018-09-10 A → 2018-09-10 | 2018-11-25 A → 2018-11-25 |  | 100% → 0% |
| 144 | Storage/Cloud Access Display Code |  | 2018-11-25 A |  | 25% → 100% |

## Version 7 (saved 2018-10-21)

Last finish stays 2019-01-30. Complete tasks 85 → 90.

Changed:

| ID | Task | Start | Finish | Complete | Total float | Other |
| --- | --- | --- | --- | --- | --- | --- |
| 1 | **Kinesic: Phase 1** |  |  | 61% → 62% |  |  |
| 31 | **Analog electronics** |  |  | 75% → 85% |  |  |
| 64 | **General purpose channels** |  | 2018-10-14 A | 91% → 100% | 0d → none |  |
| 82 | **Final Amplification** |  | 2018-10-14 A | 70% → 100% | 0d → none |  |
| 87 | Test amplification circuit | 2018-09-24 A | 2018-10-14 A | 0% → 100% |  |  |
| 89 | **PCB Analog Electronic** | 2018-09-20 A |  | 0% → 33% |  |  |
| 90 | Design PCB Layout | 2018-10-08 A |  | 0% → 25% |  |  |
| 91 | Create electronic/PCB layout | 2018-10-20 A |  | 0% → 25% |  |  |
| 92 | Contact 5 suppliers to manufacture prototype | 2018-09-20 A |  | 0% → 75% |  |  |
| 93 | Receive 3 RFQs | 2018-10-01 A |  | 0% → 50% |  |  |
| 127 | **Cloud application** |  |  | 49% → 47% |  |  |
| 136 | **Software Configuration** |  |  | 67% → 63% |  |  |
| 140 | Authentification Code |  | 2018-11-25 A | 75% → 100% |  |  |
| 144 | Storage/Cloud Access Display Code |  | 2018-11-25 A → 2018-11-25 | 100% → 50% |  |  |
| 161 | **Administrative** | 2018-09-17 A |  | 0% → 2% |  |  |
| 162 | **Business Plan: Kinesic** |  |  |  |  | was named Business Plan: Biosignals Platform |
| 180 | **Business Plan: mHeart** | 2018-10-07 A |  | 0% → 21% |  | was named Business Plan: Heart monitor |
| 185 | **Market Research** | 2018-10-07 A | 2018-10-21 A | 0% → 100% | 0d → none |  |
| 186 | Evaluate market size and expected growth for electronic medical devices | 2018-10-07 A | 2018-10-09 A | 0% → 100% |  |  |
| 187 | Evaluate market size and expected growth for eHealth | 2018-10-10 A | 2018-10-12 A | 0% → 100% |  |  |
| 188 | Evaluate market size and expected growth for hearth diseases | 2018-10-13 A | 2018-10-16 A | 0% → 100% |  |  |
| 189 | Analyze main competitors | 2018-10-16 A | 2018-10-21 A | 0% → 100% |  |  |
